# スケジュール

Schedule from MS Project, 2009-04-30 to 2009-08-12, A marks actual dates.

## Calendars

- 休日: Mon-Fri 08:00-12:00, 13:00-17:00; Sat-Sun off. Exceptions (off unless hours are given): 2009-05-04 to 2009-05-06, 2009-05-08 09:00-12:00, 13:00-18:00, 2009-07-20.

## Schedule

| ID | WBS | Task | Type | Duration | Start | Finish | Predecessors | Complete | Remaining | Total slack | Free slack | Constraint |
| --- | --- | --- | --- | --- | --- | --- | --- | --- | --- | --- | --- | --- |
| 1 | 1 | **マンガ喫茶V2.0** |  | 44d | 2009-04-30 A | 2009-07-06 |  | 87% | 5.56d | 0d |  |  |
| 2 | 1.1 | **現状および機能調査** |  | 17d | 2009-04-30 A | 2009-05-28 A |  | 100% |  |  |  |  |
| 3 | 1.1.1 | 現状調査 |  | 5d | 2009-04-30 A | 2009-05-12 A |  | 100% |  |  |  | start no earlier than 2009-04-30 |
| 4 | 1.1.2 | テーブル調査 |  | 10d | 2009-05-07 A | 2009-05-21 A | 3FS-3d | 100% |  |  |  |  |
| 5 | 1.1.3 | ソース調査 |  | 5d | 2009-05-07 A | 2009-05-14 A | 3FS-3d | 100% |  |  |  |  |
| 6 | 1.1.4 | 簡易設計書の作成 |  | 5d | 2009-05-07 A | 2009-05-14 A | 3FS-3d | 100% |  |  |  |  |
| 7 | 1.1.5 | ハンディターミナル調査 |  | 3d | 2009-05-25 A | 2009-05-28 A | 3 | 100% |  |  |  | start no earlier than 2009-05-25 |
| 8 | 1.2 | **設計** |  | 13d | 2009-05-15 A | 2009-06-03 A | 2FS-4d | 100% |  |  |  |  |
| 9 | 1.2.1 | 共通部の設計 |  | 3d | 2009-05-15 A | 2009-05-26 A |  | 100% |  |  |  |  |
| 10 | 1.2.2 | 各処理の設計 |  | 10d | 2009-05-15 A | 2009-06-03 A |  | 100% |  |  |  |  |
| 11 | 1.2.3 | データ移行設計 |  | 3d | 2009-05-22 A | 2009-05-27 A |  | 100% |  |  |  |  |
| 12 | 1.3 | **製造** |  | 20d | 2009-06-01 A | 2009-06-29 | 8FS-2d | 82% | 3.6d | 0.25d | 0d |  |
| 13 | 1.3.1 | データベース製造 |  | 15d | 2009-06-03 A | 2009-06-24 A |  | 100% |  |  |  |  |
| 14 | 1.3.2 | 共通部製造 |  | 15d | 2009-06-03 A | 2009-06-24 |  | 80% | 3d | 3.25d |  | finish no earlier than 2009-06-17 |
| 15 | 1.3.3 | 各処理製造 |  | 20d | 2009-06-01 A | 2009-06-29 |  | 70% | 6d | 0.25d |  |  |
| 16 | 1.4 | **テスト** |  | 5d | 2009-06-29 A | 2009-07-06 | 12 | 30% | 3.5d | 0d |  |  |
| 17 | 1.4.1 | テスト |  | 5d | 2009-06-29 A | 2009-07-06 |  | 30% | 3.5d | 0d |  |  |
| 18 | 1.5 | 完成 | milestone | 0d | 2009-07-06 | 2009-07-06 | 16 |  |  | 0d |  |  |
| 20 | 2 | **マンガ喫茶V2.1** |  | 16d | 2009-07-06 | 2009-07-29 | 18 |  |  | 0d |  |  |
| 21 | 2.1 | ハンディターミナル設計 |  | 8d | 2009-07-06 | 2009-07-16 |  |  |  | 0d |  |  |
| 22 | 2.2 | ハンディターミナル製造 |  | 8d | 2009-07-16 | 2009-07-29 | 21 |  |  | 0d |  |  |
| 24 | 3 | **マンガ喫茶V2.2** |  | 10d | 2009-07-29 | 2009-08-12 | 20 |  |  | 0d |  |  |
| 25 | 3.1 | 発注系処理設計 |  | 5d | 2009-07-29 | 2009-08-05 |  |  |  | 0d |  |  |
| 26 | 3.2 | 発注系処理製造 |  | 5d | 2009-08-05 | 2009-08-12 | 25 |  |  | 0d |  |  |
